# caGrid_HighLevel_TaskPlan_ISO_Datatype

Schedule from MS Project, 2010-03-02 to 2010-05-18, A marks actual dates.
Personal

## Calendars

- Standard: Mon-Fri 08:00-12:00, 13:00-17:00; Sat-Sun off.

## Resources

| Resource |
| --- |
| caGrid |

## Schedule

| ID | WBS | Task | Type | Duration | Start | Finish | Predecessors | Complete | Remaining | Total slack | Constraint | Resources | Work | Actual work |
| --- | --- | --- | --- | --- | --- | --- | --- | --- | --- | --- | --- | --- | --- | --- |
| 1 | 1 | **caGrid Enhancements** |  | 55.05d? | 2010-03-02 A | 2010-05-18 |  | 99% | 0d? | 0d |  |  | 1205.2h | 772.8h |
| 2 | 1.1 | Start | milestone | 0d | 2010-03-02 A | 2010-03-02 A |  | 100% |  |  |  | caGrid |  |  |
| 3 | 1.2 | Document Scope |  | 3d | 2010-03-08 A | 2010-03-10 A | 2 | 100% |  |  |  | caGrid | 24h | 24h |
| 4 | 1.3 | **Analytical services Introduce extension** |  | 36.8d? | 2010-03-10 A | 2010-04-29 A |  | 100% |  |  |  | caGrid | 380.8h | 380.8h |
| 5 | 1.3.1 | Start | milestone | 0d | 2010-03-10 A | 2010-03-10 A | 3 | 100% |  |  |  | caGrid |  |  |
| 6 | 1.3.2 | Create design document for analytical datatypes extension |  | 3d | 2010-03-10 A | 2010-03-12 A | 5 | 100% |  |  |  | caGrid | 24h | 24h |
| 7 | 1.3.3 | Create Introduce extensions project |  | 5d | 2010-03-10 A | 2010-03-16 A | 5 | 100% |  |  |  | caGrid | 40h | 40h |
| 8 | 1.3.4 | **Implement Introduce extension** |  | 10d | 2010-04-15 A | 2010-04-28 A | 7 | 100% |  |  |  | caGrid | 128h | 128h |
| 9 | 1.3.4.1 | Implement JAXB Serialization |  | 10d | 2010-04-15 A | 2010-04-28 A |  | 100% |  |  |  | caGrid | 80h | 80h |
| 10 | 1.3.4.2 | Add postStubs fixes to the ISO Introduce type mapping extension and fix the GUI layout |  | 5d | 2010-04-15 A | 2010-04-21 A |  | 100% |  |  |  | caGrid | 40h | 40h |
| 11 | 1.3.5 | **Create service development process documentation** |  | 10.8d? | 2010-04-15 A | 2010-04-29 A | 8, 9, 10 | 100% |  |  |  | caGrid | 126.4h | 126.4h |
| 12 | 1.3.5.1 | Create Docs for ISOAnalytical Extension |  | 4d | 2010-04-15 A | 2010-04-20 A |  | 100% |  |  | start no earlier than 2010-04-15 | caGrid | 32h | 32h |
| 13 | 1.3.5.2 | Add analytical service docs to cagrid.org wiki |  | 1d? | 2010-04-21 A | 2010-04-29 A |  | 100% |  |  | start no earlier than 2010-04-21 | caGrid | 8h | 8h |
| 14 | 1.3.6 | Upload Introduce extension to Introduce update site |  | 5d | 2010-04-19 A | 2010-04-23 A |  | 100% |  |  |  | caGrid | 40h | 40h |
| 15 | 1.3.7 | Hand off to QA |  | 1d? | 2010-04-28 A | 2010-04-28 A |  | 100% |  |  |  | caGrid | 8h | 8h |
| 16 | 1.3.8 | Finish | milestone | 0d | 2010-04-29 A | 2010-04-29 A | 6, 7, 8, 11, 14, 15 | 100% |  |  |  | caGrid |  |  |
| 17 | 1.4 | **Data Services ISO 21090 caCORE SDK style** |  | 54.05d? | 2010-03-03 A | 2010-05-18 |  | 99% | 0d? | 0d |  | caGrid | 800.4h | 368h |
| 18 | 1.4.1 | Start | milestone | 0d | 2010-03-03 A | 2010-03-03 A | 2 | 100% |  |  | start no earlier than 2010-03-03 | caGrid |  |  |
| 19 | 1.4.2 | Create design document |  | 1d? | 2010-04-21 A | 2010-04-21 A | 18 | 100% |  |  |  | caGrid | 8h | 8h |
| 20 | 1.4.3 | Design CQL -> HQL translation |  | 17d | 2010-03-09 A | 2010-03-31 A | 19 | 100% |  |  |  | caGrid | 136h | 136h |
| 21 | 1.4.4 | Create project for domain model generation |  | 1d | 2010-04-21 A | 2010-04-21 A | 20 | 100% |  |  |  | caGrid | 8h | 8h |
| 22 | 1.4.5 | Create project for the CQL -> HQL translation and Introduce style |  | 1d | 2010-04-21 A | 2010-04-21 A | 20 | 100% |  |  | start no earlier than 2010-04-21 | caGrid | 8h | 8h |
| 23 | 1.4.6 | Implement CQL -> HQL translation |  | 10d | 2010-04-21 A | 2010-05-04 A | 20 | 100% |  |  |  | caGrid | 80h | 80h |
| 24 | 1.4.7 | Create ISO 21090 caCORE SDK data services style |  | 10d | 2010-04-21 A | 2010-05-18 A | 23 | 100% |  |  |  | caGrid | 80h | 80h |
| 25 | 1.4.8 | Create ISO 21090 Introduce data service creation process user documentation |  | 3d | 2010-04-21 A | 2010-04-23 A | 20 | 100% |  |  | start no earlier than 2010-04-21 | caGrid | 24h | 24h |
| 26 | 1.4.9 | Upload style to Introduce update site |  | 2d | 2010-03-11 A | 2010-04-27 A | 25 | 100% |  |  | start no earlier than 2010-03-11 | caGrid | 16h | 16h |
| 27 | 1.4.10 | Hand off to QA |  | 1d | 2010-04-27 A | 2010-04-28 A | 26 | 100% |  |  | start no earlier than 2010-04-21 | caGrid | 8h | 8h |
| 28 | 1.4.11 | Finish | milestone | 0d | 2010-05-18 A | 2010-05-18 A | 21, 22, 23, 24, 25, 26, 27 | 100% |  |  |  | caGrid |  |  |
| 29 | 1.5 | Finish | milestone | 0d | 2010-05-18 A | 2010-05-18 A | 16, 28 | 100% |  |  |  | caGrid |  |  |
