# HighLevelTaskPlan-ISO_Datatype2

Schedule from MS Project, 2010-02-18 to 2010-06-17, A marks actual dates.
Personal

## Calendars

- Standard: Mon-Fri 08:00-12:00, 13:00-17:00; Sat-Sun off.

## Resources

| Resource |
| --- |
| SDK |
| caGrid |
| caAdapter |
| QA |
| Documentation |

## Schedule

| ID | WBS | Task | Type | Duration | Start | Finish | Predecessors | Complete | Remaining | Total slack | Free slack | Constraint | Resources | Work | Actual work |
| --- | --- | --- | --- | --- | --- | --- | --- | --- | --- | --- | --- | --- | --- | --- | --- |
| 1 | 1 | **ISO Datatype support** |  | 86d? | 2010-02-18 A | 2010-06-17 |  | 77% | 19.82d? | 0d |  |  |  | 4005.2h | 3289.98h |
| 2 | 1.1 | Kickoff |  | 1d | 2010-03-01 | 2010-03-01 |  |  |  | 59d |  | start no earlier than 2010-03-01 |  |  |  |
| 4 | 1.2 | **Implementation** |  | 73d? | 2010-02-18 A | 2010-05-31 |  | 92% | 5.6d? | 13d |  |  |  | 3245.2h | 2788.8h |
| 5 | 1.2.1 | **ISO 21090 Library** |  | 20d | 2010-03-02 A | 2010-03-29 A |  | 100% |  |  |  |  |  | 480h | 480h |
| 6 | 1.2.1.1 | Analyze COPPA Localized library |  | 5d | 2010-03-02 A | 2010-03-08 A | 2 | 100% |  |  |  | start no earlier than 2010-03-02 | SDK; caGrid | 80h | 80h |
| 7 | 1.2.1.2 | Analyze COPPA serialization framework |  | 5d | 2010-03-02 A | 2010-03-08 A | 2 | 100% |  |  |  | start no earlier than 2010-03-02 | SDK; caGrid | 80h | 80h |
| 8 | 1.2.1.3 | Analyze COPPA OR Mapping framework |  | 5d | 2010-03-02 A | 2010-03-08 A | 2 | 100% |  |  |  | start no earlier than 2010-03-02 | SDK; caGrid | 80h | 80h |
| 9 | 1.2.1.4 | Implement enhancements in datatype library |  | 15d | 2010-03-09 A | 2010-03-29 A | 8 | 100% |  |  |  | start no earlier than 2010-03-09 | SDK; caGrid | 240h | 240h |
| 10 | 1.2.1.5 | Baseline library code | milestone | 0d | 2010-03-29 A | 2010-03-29 A | 9 | 100% |  |  |  | start no earlier than 2010-03-29 |  |  |  |
| 12 | 1.2.2 | **SDK Enhancements** |  | 73d | 2010-02-18 A | 2010-05-31 |  | 98% | 1.59d | 13d |  |  |  | 1104h | 1080h |
| 13 | 1.2.2.1 | Document short term and long term goals for the SDK |  | 10d | 2010-02-18 A | 2010-03-03 A |  | 100% |  |  |  | start no earlier than 2010-02-18 | SDK | 80h | 80h |
| 14 | 1.2.2.2 | Create design document for tag value specification |  | 10d | 2010-03-09 A | 2010-03-22 A | 8 | 100% |  |  |  | start no earlier than 2010-03-09 | SDK | 80h | 80h |
| 15 | 1.2.2.3 | Create design document for Hibernate mapping |  | 15d | 2010-03-09 A | 2010-03-29 A | 8 | 100% |  |  |  | start no earlier than 2010-03-09 | SDK | 120h | 120h |
| 16 | 1.2.2.4 | Develop JAXB based serialization framework |  | 15d | 2010-03-09 A | 2010-03-29 A | 8 | 100% |  |  |  | start no earlier than 2010-03-09 | SDK | 120h | 120h |
| 17 | 1.2.2.5 | Create Test UML model |  | 5d | 2010-03-23 A | 2010-03-29 A | 14 | 100% |  |  |  | start no earlier than 2010-03-23 | SDK | 40h | 40h |
| 18 | 1.2.2.6 | Enhance SDK Java code generator for the ISO data types |  | 5d | 2010-03-23 A | 2010-03-29 A | 15FS-5d | 100% |  |  |  | start no earlier than 2010-03-23 | SDK | 40h | 40h |
| 19 | 1.2.2.7 | Enhance SDK ORM module for ISO data types |  | 10d | 2010-03-23 A | 2010-04-05 A | 15FS-5d | 100% |  |  |  | start no earlier than 2010-03-23 | SDK | 80h | 80h |
| 20 | 1.2.2.8 | Enhance SDK service layer to support ISO data types |  | 15d | 2010-03-09 A | 2010-03-29 A | 6 | 100% |  |  |  | start no earlier than 2010-03-09 | SDK | 120h | 120h |
| 21 | 1.2.2.9 | Integrate ISO 21090 library in JAXB serialization |  | 8d | 2010-03-30 A | 2010-04-08 A | 20, 16 | 100% |  |  |  | start no earlier than 2010-03-30 | SDK | 64h | 64h |
| 22 | 1.2.2.10 | Enhance SDK proxy framework for ISO data types |  | 5d | 2010-04-09 A | 2010-04-15 A | 21 | 100% |  |  |  | start no earlier than 2010-04-09 | SDK | 40h | 40h |
| 23 | 1.2.2.11 | Enhance BDA scripts for packaging and deployment |  | 15d | 2010-03-30 A | 2010-04-19 A | 6, 20 | 100% |  |  |  | start no earlier than 2010-03-30 | SDK | 120h | 120h |
| 24 | 1.2.2.12 | Unit test and defect fix |  | 5d | 2010-04-20 A | 2010-04-26 A | 23 | 100% |  |  |  | start no earlier than 2010-04-20 | SDK | 40h | 40h |
| 25 | 1.2.2.13 | Enhance SDK RESTful query translator for ISO data types |  | 10d | 2010-05-04 A | 2010-05-17 | 24 | 80% | 2d | 22d | 0d | start no earlier than 2010-03-30 | SDK | 80h | 64h |
| 26 | 1.2.2.14 | SDK internal testing |  | 10d | 2010-05-18 A | 2010-05-31 | 25 | 90% | 1d | 13d |  |  | SDK | 80h | 72h |

| ID | WBS | Task | Type | Duration | Start | Finish | Predecessors | Complete | Remaining | Total slack | Free slack | Constraint | Resources | Work | Actual work |
| --- | --- | --- | --- | --- | --- | --- | --- | --- | --- | --- | --- | --- | --- | --- | --- |
| 29 | 1.2.3 | **caAdapter Enhancements** |  | 57d | 2010-03-02 A | 2010-05-19 |  | 72% | 15.83d | 21d |  |  |  | 376h | 376h |
| 30 | 1.2.3.1 | Document the short and long term scope of the caAdapter efforts |  | 5d | 2010-03-02 A | 2010-03-08 A | 2 | 100% |  |  |  | start no earlier than 2010-03-02 | caAdapter | 40h | 40h |
| 31 | 1.2.3.2 | Enhance caAdapter to load ISO 21090 information |  | 10d | 2010-03-09 A | 2010-03-22 A | 30 | 100% |  |  |  | start no earlier than 2010-03-09 | caAdapter | 80h | 80h |
| 32 | 1.2.3.3 | Create template model |  | 5d | 2010-03-16 A | 2010-03-22 A | 30 | 100% |  |  |  | start no earlier than 2010-03-16 | caAdapter | 40h | 40h |
| 33 | 1.2.3.4 | Enhance caAdapter Model Mapping Service |  | 17d | 2010-03-23 A | 2010-04-14 A | 32 | 100% |  |  |  | start no earlier than 2010-03-23 | caAdapter | 136h | 136h |
| 34 | 1.2.3.5 | Unit test and defect fix |  | 10d | 2010-04-15 A | 2010-04-28 A | 33 | 100% |  |  |  | start no earlier than 2010-04-15 | caAdapter | 80h | 80h |
| 35 | 1.2.3.6 | caAdapter iteration #2 |  | 5d | 2010-04-29 A | 2010-05-05 A | 34 | 100% |  |  |  |  |  |  |  |
| 36 | 1.2.3.7 | caAdapter iteration #3 |  | 10d | 2010-05-06 | 2010-05-19 | 35 |  |  | 21d |  |  |  |  |  |
| 37 | 1.2.3.8 | caAdapter Documentation |  | 10d | 2010-05-06 | 2010-05-19 | 35 |  |  | 16d | 0d |  |  |  |  |
| 38 | 1.2.3.9 | Deliver baseline caAdapter | milestone | 0d | 2010-05-19 | 2010-05-19 | 37 |  |  | 16d | 0d | start no earlier than 2010-02-18 |  |  |  |
| 40 | 1.2.4 | caGrid_HighLevel_TaskPlan_ISO_Datatype |  | 55.05d? | 2010-03-02 A | 2010-05-18 |  | 99% | 0d? | 0d |  |  |  | 1205.2h | 772.8h |
| 42 | 1.2.5 | **SDK/caGrid Integration** |  | 5d | 2010-04-27 A | 2010-05-03 A |  | 100% |  |  |  |  |  | 80h | 80h |
| 43 | 1.2.5.1 | Perform SDK and caGrid Integration |  | 5d | 2010-04-27 A | 2010-05-03 A | 24 | 100% |  |  |  | start no earlier than 2010-04-27 | SDK; caGrid | 80h | 80h |
| 45 | 1.3 | **QA Testing** |  | 39d | 2010-04-20 A | 2010-06-11 |  | 35% | 25.21d | 0d |  |  |  | 344h | 257.18h |
| 46 | 1.3.1 | Prepare test plan |  | 10d | 2010-04-20 A | 2010-05-03 | 43SS-5d | 75% | 2.5d | 5.2d | 0d | start no earlier than 2010-04-20 | QA; SDK; caGrid | 240h | 180h |
| 47 | 1.3.2 | **Execute test cases iteration #1** |  | 13d | 2010-05-04 A | 2010-05-20 | 46, 43 | 74% | 3.35d | 0d |  |  | QA | 104h | 77.18h |
| 48 | 1.3.2.1 | SDK #1 |  | 10d | 2010-05-04 A | 2010-05-17 | 46, 43 | 80% | 2d | 3d |  |  |  |  |  |
| 49 | 1.3.2.2 | caAdapter #2 |  | 5d | 2010-05-04 A | 2010-05-10 A | 46, 43 | 100% |  |  |  |  |  |  |  |
| 50 | 1.3.2.3 | caGRID AS #1 |  | 10d | 2010-05-04 A | 2010-05-17 A | 46, 43 | 100% |  |  |  |  |  |  |  |
| 51 | 1.3.2.4 | caGRID DS #1 |  | 13d | 2010-05-04 A | 2010-05-20 | 46, 43 | 40% | 7.8d | 0d |  |  |  |  |  |
| 52 | 1.3.3 | **Exceute test cases iteration #2** |  | 8d | 2010-05-21 | 2010-06-01 | 51 |  |  | 0d |  |  |  |  |  |
| 53 | 1.3.3.1 | SDK #2 |  | 8d | 2010-05-21 | 2010-06-01 | 48 |  |  | 0d |  |  |  |  |  |
| 54 | 1.3.3.2 | caAdapter #3 |  | 5d | 2010-05-21 | 2010-05-27 | 49 |  |  | 11d |  |  |  |  |  |
| 55 | 1.3.3.3 | caGRID AS #2 |  | 8d | 2010-05-21 | 2010-06-01 | 50 |  |  | 0d |  |  |  |  |  |
| 56 | 1.3.3.4 | caGRID DS #2 |  | 8d | 2010-05-21 | 2010-06-01 | 51 |  |  | 0d |  |  |  |  |  |

| ID | WBS | Task | Type | Duration | Start | Finish | Predecessors | Complete | Remaining | Total slack | Free slack | Constraint | Resources | Work | Actual work |
| --- | --- | --- | --- | --- | --- | --- | --- | --- | --- | --- | --- | --- | --- | --- | --- |
| 57 | 1.3.4 | **Execute test cases iteration #3** |  | 8d | 2010-06-02 | 2010-06-11 |  |  |  | 0d |  |  |  |  |  |
| 58 | 1.3.4.1 | SDK #3 |  | 8d | 2010-06-02 | 2010-06-11 | 53 |  |  | 0d |  |  |  |  |  |
| 59 | 1.3.4.2 | caGRID AS #3 |  | 8d | 2010-06-02 | 2010-06-11 | 55 |  |  | 0d |  |  |  |  |  |
| 60 | 1.3.4.3 | caGRID DS #3 |  | 8d | 2010-06-02 | 2010-06-11 | 56 |  |  | 0d |  |  |  |  |  |
| 62 | 1.4 | **User Documentation** |  | 34d | 2010-04-09 A | 2010-05-26 |  | 76% | 8.07d | 16d |  |  |  | 320h | 244h |
| 63 | 1.4.1 | Start | milestone | 0d | 2010-04-09 A | 2010-04-09 A |  | 100% |  |  |  |  |  |  |  |
| 64 | 1.4.2 | **Non-Product Specific Guides** |  | 5d | 2010-04-09 A | 2010-04-15 |  | 77% | 1.17d | 45d |  |  |  | 120h | 92h |
| 65 | 1.4.2.1 | ISO Common Project Overview |  | 5d | 2010-04-09 A | 2010-04-15 | 63 | 75% | 1.25d | 41d | 29d |  | Documentation | 40h | 30h |
| 66 | 1.4.2.2 | Example Use Cases/Work Flows |  | 5d | 2010-04-09 A | 2010-04-15 | 63 | 75% | 1.25d | 45d | 29d |  | Documentation | 40h | 30h |
| 67 | 1.4.2.3 | UML Modeling Guide |  | 5d | 2010-04-09 A | 2010-04-15 | 63 | 80% | 1d | 45d | 29d |  | Documentation | 40h | 32h |
| 68 | 1.4.3 | **Product Specific Guides** |  | 22d | 2010-04-27 A | 2010-05-26 |  | 76% | 5.28d | 16d |  |  |  | 200h | 152h |
| 69 | 1.4.3.1 | caAdapter |  | 5d | 2010-05-20 A | 2010-05-26 | 38 | 50% | 2.5d | 16d | 0d |  | caAdapter | 40h | 20h |
| 70 | 1.4.3.2 | SDK Workbench |  | 5d | 2010-04-27 A | 2010-05-03 | 24 | 80% | 1d | 33d | 17d |  | SDK | 40h | 32h |
| 71 | 1.4.3.3 | SDK Programmers Guide |  | 5d | 2010-04-27 A | 2010-05-03 | 24 | 50% | 2.5d | 33d | 17d |  | SDK | 40h | 20h |
| 72 | 1.4.3.4 | caGrid Analytical Service Tutorial |  | 5d | 2010-05-18 A | 2010-05-25 A | 40 | 100% |  |  |  |  | caGrid | 40h | 40h |
| 73 | 1.4.3.5 | caGrid Data Service Tutorial |  | 5d | 2010-05-18 A | 2010-05-25 A | 40 | 100% |  |  |  |  | caGrid | 40h | 40h |
| 74 | 1.4.4 | Finish | milestone | 0d | 2010-05-26 | 2010-05-26 | 65, 66, 67, 69, 70, 71, 72, 73 |  |  | 16d |  |  |  |  |  |
| 76 | 1.5 | **Transition** |  | 4d | 2010-06-14 | 2010-06-17 |  |  |  | 0d |  |  |  | 96h |  |
| 77 | 1.5.1 | Prepare release notes, zope sites |  | 2d | 2010-06-14 | 2010-06-15 | 65, 45 |  |  | 0d |  | start no earlier than 2010-05-18 | SDK; caGrid; caAdapter | 48h |  |
| 78 | 1.5.2 | Upload artifacts on the public sites |  | 2d | 2010-06-16 | 2010-06-17 | 77 |  |  | 0d |  | start no earlier than 2010-05-20 | SDK; caGrid; caAdapter | 48h |  |
